# Cronograma

Schedule from MS Project, 2009-02-28 to 2009-05-30, A marks actual dates.
Fóton Informática S. A.

## Calendars

- Padrão: Mon-Fri 19:00-23:30; Sat-Sun 10:00-12:00, 14:00-23:30. Exceptions (off unless hours are given): 2009-04-10 to 2009-04-12 (Feriado), 2009-04-18 to 2009-04-21 (Feriado2), 2009-05-01 to 2009-05-03 (Feriado3).

## Resources

| Resource |
| --- |
| Leandro de Barros |
| Carlos Henrique |
| Laurindo Souza |

## Schedule

| ID | WBS | Task | Duration | Start | Finish | Predecessors | Complete | Remaining | Total slack | Constraint | Resources | Work | Actual work |
| --- | --- | --- | --- | --- | --- | --- | --- | --- | --- | --- | --- | --- | --- |
| 1 | 1 | Pré-Projeto | 6.44d | 2009-02-28 A | 2009-03-07 A |  | 100% |  |  | start no earlier than 2009-02-28 | Carlos Henrique; Laurindo Souza; Leandro de Barros | 154.5h | 154.5h |
| 2 | 2 | **Trabalho Escrito** | 57.38d? | 2009-03-07 A | 2009-05-30 | 1 | 65% | 20.27d? | 0d |  |  | 1626h | 1385.17h |
| 3 | 2.1 | **Introdução** | 5.69d | 2009-03-07 A | 2009-03-14 A |  | 100% |  |  |  |  | 680h | 680h |
| 4 | 2.1.1 | Motivação | 3d | 2009-03-07 A | 2009-03-10 A |  | 100% |  |  | start no earlier than 2009-03-07 | Carlos Henrique; Laurindo Souza; Leandro de Barros | 72h | 72h |
| 5 | 2.1.2 | Justificativa do Tema | 3d | 2009-03-07 A | 2009-03-10 A |  | 100% |  |  |  | Carlos Henrique; Laurindo Souza; Leandro de Barros | 72h | 72h |
| 6 | 2.1.3 | Relevância | 3d | 2009-03-07 A | 2009-03-10 A |  | 100% |  |  |  | Carlos Henrique; Laurindo Souza; Leandro de Barros | 72h | 72h |
| 7 | 2.1.4 | Objetivos do Sistema | 3d | 2009-03-07 A | 2009-03-10 A |  | 100% |  |  |  | Carlos Henrique; Laurindo Souza; Leandro de Barros | 72h | 72h |
| 8 | 2.1.5 | Geral (marco do projeto) | 3d | 2009-03-07 A | 2009-03-10 A |  | 100% |  |  |  | Carlos Henrique; Laurindo Souza; Leandro de Barros | 72h | 72h |
| 9 | 2.1.6 | Específicos (metas para se atingir o objetivo geral) | 3d | 2009-03-07 A | 2009-03-10 A |  | 100% |  |  |  | Carlos Henrique; Laurindo Souza; Leandro de Barros | 72h | 72h |
| 10 | 2.1.7 | Análise Institucional | 3d | 2009-03-07 A | 2009-03-10 A |  | 100% |  |  |  | Carlos Henrique; Laurindo Souza; Leandro de Barros | 72h | 72h |
| 11 | 2.1.8 | A empresa e seu negócio | 3d | 2009-03-07 A | 2009-03-10 A |  | 100% |  |  |  | Carlos Henrique; Laurindo Souza; Leandro de Barros | 72h | 72h |
| 12 | 2.1.9 | Usuário principal | 4d | 2009-03-07 A | 2009-03-12 A |  | 100% |  |  |  | Carlos Henrique | 32h | 32h |
| 13 | 2.1.10 | Organograma da empresa | 4d | 2009-03-07 A | 2009-03-12 A |  | 100% |  |  |  | Carlos Henrique | 32h | 32h |
| 14 | 2.1.11 | A área de negócios contextualizada | 4d | 2009-03-07 A | 2009-03-12 A |  | 100% |  |  |  | Carlos Henrique | 32h | 32h |
| 15 | 2.1.12 | Descrição do restante do Trabalho | 1d | 2009-03-13 A | 2009-03-14 A |  | 100% |  |  | finish no earlier than 2009-03-14 | Leandro de Barros | 8h | 8h |
| 16 | 2.2 | Embasamento Teórico | 5.69d? | 2009-03-14 A | 2009-03-21 | 15 | 95% | 0.28d? | 46d | finish no earlier than 2009-03-21 | Leandro de Barros | 45.5h | 43.23h |
| 17 | 2.3 | **Análise Funcional** | 5.69d | 2009-03-21 A | 2009-03-28 A | 16 | 100% |  |  |  | Carlos Henrique | 117.5h | 117.5h |
| 18 | 2.3.1 | Análise das necessidades e problemas diagnosticados | 1d | 2009-03-21 A | 2009-03-22 A |  | 100% |  |  |  | Carlos Henrique | 8h | 8h |
| 19 | 2.3.2 | Proposta de solução | 2d | 2009-03-21 A | 2009-03-22 A |  | 100% |  |  |  | Carlos Henrique | 16h | 16h |
| 20 | 2.3.3 | Benefícios esperados | 3d | 2009-03-21 A | 2009-03-24 A |  | 100% |  |  |  | Carlos Henrique | 24h | 24h |
| 21 | 2.3.4 | Análise de Riscos (opcional) | 3d | 2009-03-24 A | 2009-03-28 A |  | 100% |  |  | finish no earlier than 2009-03-28 | Carlos Henrique | 24h | 24h |
| 22 | 2.4 | **Abrangência do Sistema** | 22.75d | 2009-03-07 A | 2009-04-04 | 21 | 50% | 11.28d | 34.62d |  |  | 192h | 96.8h |
| 23 | 2.4.1 | Possibilidade de implantação em outras Empresas; | 3d | 2009-03-07 A | 2009-03-10 A |  | 100% |  |  |  | Carlos Henrique | 24h | 24h |
| 24 | 2.4.2 | Não abrangência – são as restrições d trabalho (o que o sistema não irá abranger); | 3d | 2009-03-07 A | 2009-03-10 A |  | 100% |  |  |  | Carlos Henrique | 24h | 24h |
| 25 | 2.4.3 | Ambiente Tecnológico Atual (se existir) | 3d | 2009-03-28 | 2009-03-31 |  |  |  | 37.31d |  | Laurindo Souza | 24h |  |
| 26 | 2.4.4 | Ambiente Tecnológico Proposto | 4d | 2009-03-28 A | 2009-04-02 |  | 50% | 2d | 36.31d |  | Laurindo Souza | 32h | 16h |
| 27 | 2.4.5 | Ambiente Físico Atual - salas, CPD, estrutura física | 4d | 2009-03-28 | 2009-04-02 |  |  |  | 36.31d |  | Laurindo Souza | 32h |  |
| 28 | 2.4.6 | Ambiente Físico Proposto - salas, CPD, estrutura física | 4d | 2009-03-28 A | 2009-04-02 |  | 50% | 2d | 36.31d |  | Laurindo Souza | 32h | 16h |
| 29 | 2.4.7 | Cronograma para a realização do projeto | 3d | 2009-03-31 A | 2009-04-04 |  | 70% | 0.9d | 34.62d | finish no earlier than 2009-04-04 | Leandro de Barros | 24h | 16.8h |

| ID | WBS | Task | Duration | Start | Finish | Complete | Remaining | Total slack | Constraint | Resources | Work | Actual work |
| --- | --- | --- | --- | --- | --- | --- | --- | --- | --- | --- | --- | --- |
| 30 | 2.5 | **Projetos Lógico e Físico** | 20.88d? | 2009-03-07 A | 2009-04-02 | 79% | 4.39d? | 36.5d |  |  | 551h | 435.25h |
| 31 | 2.5.1 | **Requisitos do usuário** | 20.88d? | 2009-03-07 A | 2009-04-02 | 79% | 4.39d? | 36.5d |  |  | 551h | 435.25h |
| 32 | 2.5.1.1 | **Requisitos Funcionais** | 14.5d? | 2009-03-08 A | 2009-03-26 | 95% | 0.72d? | 42.19d |  |  | 259h | 246.05h |
| 33 | 2.5.1.1.1 | Atualiza Parâmetro | 1d | 2009-03-08 A | 2009-03-08 | 95% | 0.05d | 55.69d | start no earlier than 2009-03-08 | Leandro de Barros | 8h | 7.6h |
| 34 | 2.5.1.1.2 | Mantém Usuário | 1d | 2009-03-09 A | 2009-03-10 | 95% | 0.05d | 54.25d | start no earlier than 2009-03-09 | Carlos Henrique | 8h | 7.6h |
| 35 | 2.5.1.1.3 | Mantém Convênio | 1.69d? | 2009-03-09 A | 2009-03-12 | 95% | 0.08d? | 53.56d | finish no earlier than 2009-03-12 | Laurindo Souza | 13.5h | 12.82h |
| 36 | 2.5.1.1.4 | Mantém Consultas e Exames | 3.69d? | 2009-03-15 A | 2009-03-20 | 95% | 0.18d? | 47.31d | finish no earlier than 2009-03-20 | Carlos Henrique | 29.5h | 28.02h |
| 37 | 2.5.1.1.5 | Mantém Agenda Médica | 3.88d? | 2009-03-11 A | 2009-03-15 | 95% | 0.19d? | 50.25d | finish no earlier than 2009-03-15 | Leandro de Barros | 31h | 29.45h |
| 38 | 2.5.1.1.6 | Atualiza Histórico de Prontuário | 3.88d? | 2009-03-11 A | 2009-03-15 | 95% | 0.19d? | 50.25d | finish no earlier than 2009-03-15 | Carlos Henrique | 31h | 29.45h |
| 39 | 2.5.1.1.7 | Realiza Login | 1d? | 2009-03-08 A | 2009-03-09 | 95% | 0.05d? | 55.25d | finish no earlier than 2009-03-09 | Leandro de Barros | 8h | 7.6h |
| 40 | 2.5.1.1.8 | Emite Receita | 4.56d? | 2009-03-21 A | 2009-03-26 | 95% | 0.23d? | 42.19d | finish no earlier than 2009-03-26 | Laurindo Souza | 36.5h | 34.67h |
| 41 | 2.5.1.1.9 | Emite Relatórios de Convênio | 4.56d? | 2009-03-12 A | 2009-03-17 | 95% | 0.23d? | 49d | finish no earlier than 2009-03-17 | Laurindo Souza | 36.5h | 34.67h |
| 42 | 2.5.1.1.10 | Emite Relatórios de Usuário | 1.44d? | 2009-03-15 A | 2009-03-16 | 95% | 0.07d? | 49.56d | finish no earlier than 2009-03-16 | Leandro de Barros | 11.5h | 10.93h |
| 43 | 2.5.1.1.11 | Emite Relatórios de Prontuário | 4.56d? | 2009-03-18 A | 2009-03-23 | 95% | 0.23d? | 43.88d | finish no earlier than 2009-03-23 | Laurindo Souza | 36.5h | 34.67h |
| 44 | 2.5.1.1.12 | Emite Relatórios de Log | 1.12d? | 2009-03-23 A | 2009-03-25 | 95% | 0.06d? | 42.75d | finish no earlier than 2009-03-25 | Carlos Henrique | 9h | 8.55h |
| 45 | 2.5.1.2 | Requisitos Não-Funcionais | 16.5d? | 2009-03-07 A | 2009-03-28 | 80% | 3.3d? | 40.88d | start no earlier than 2009-03-07 | Leandro de Barros | 132h | 105.6h |
| 46 | 2.5.1.3 | **Requisitos Suplementares** | 20.88d | 2009-03-07 A | 2009-04-02 | 52% | 9.97d | 36.5d |  |  | 160h | 83.6h |
| 47 | 2.5.1.3.1 | Requisitos de Integridade | 2d | 2009-03-07 A | 2009-03-08 | 48% | 1.05d | 55.38d |  | Leandro de Barros | 16h | 7.6h |
| 48 | 2.5.1.3.2 | Requisitos de Segurança | 2d | 2009-03-07 A | 2009-03-08 | 48% | 1.05d | 55.38d |  | Leandro de Barros | 16h | 7.6h |
| 49 | 2.5.1.3.3 | Requisitos de Desempenho | 2d | 2009-03-07 A | 2009-03-08 | 48% | 1.05d | 55.38d |  | Leandro de Barros | 16h | 7.6h |
| 50 | 2.5.1.3.4 | Requisitos de Usabilidade | 2d | 2009-03-07 A | 2009-03-08 | 48% | 1.05d | 55.38d |  | Leandro de Barros | 16h | 7.6h |
| 51 | 2.5.1.3.5 | Requisitos de interface externa | 2d | 2009-03-07 A | 2009-03-08 | 48% | 1.05d | 55.38d |  | Leandro de Barros | 16h | 7.6h |
| 52 | 2.5.1.3.6 | Requisitos de interface com ambiente de hardware | 2d | 2009-03-07 A | 2009-03-08 | 48% | 1.05d | 55.38d |  | Leandro de Barros | 16h | 7.6h |
| 53 | 2.5.1.3.7 | Requisitos de interface com ambiente de software | 2d | 2009-03-07 A | 2009-03-08 | 48% | 1.05d | 55.38d |  | Leandro de Barros | 16h | 7.6h |
| 54 | 2.5.1.3.8 | Requisitos de execução | 2d | 2009-03-07 A | 2009-03-08 | 48% | 1.05d | 55.38d |  | Leandro de Barros | 16h | 7.6h |
| 55 | 2.5.1.3.9 | Requisitos genéricos | 2d | 2009-03-07 A | 2009-03-08 | 48% | 1.05d | 55.38d |  | Leandro de Barros | 16h | 7.6h |
| 56 | 2.5.1.3.10 | Requisitos inversos (se necessário) | 2d | 2009-03-07 A | 2009-04-02 | 95% | 0.1d | 36.5d | finish no earlier than 2009-04-02 | Leandro de Barros | 16h | 15.2h |

| ID | WBS | Task | Duration | Start | Finish | Complete | Remaining | Total slack | Resources | Work | Actual work |
| --- | --- | --- | --- | --- | --- | --- | --- | --- | --- | --- | --- |
| 57 | 2.6 | **Modelagem Funcional** | 1d? | 2009-03-07 A | 2009-03-08 | 32% | 0.68d? | 56.38d |  | 40h | 12.4h |
| 58 | 2.6.1 | Diagramas de Casos de Uso | 1d? | 2009-03-07 A | 2009-03-08 | 65% | 0.35d? | 56.38d | Leandro de Barros | 8h | 5.2h |
| 59 | 2.6.2 | Diagramas de Classe de Alto Nível Relativos aos Casos de Uso | 1d? | 2009-03-07 | 2009-03-08 |  |  | 56.38d | Laurindo Souza | 8h |  |
| 60 | 2.6.3 | Modelo Entidade-Relacionamento (MER) | 1d? | 2009-03-07 A | 2009-03-08 | 30% | 0.7d? | 56.38d | Carlos Henrique; Laurindo Souza; Leandro de Barros | 24h | 7.2h |
| 61 | 2.7 | **Modelagem Lógica / Física** | 1d? | 2009-03-07 | 2009-03-08 |  |  | 56.38d |  |  |  |
| 62 | 2.7.1 | **Diagrama de Classes, detalhando atributos e operações** | 1d? | 2009-03-07 | 2009-03-08 |  |  | 56.38d |  |  |  |
| 63 | 2.7.1.1 | Classes de Dados - entity | 1d? | 2009-03-07 | 2009-03-08 |  |  | 56.38d |  |  |  |
| 64 | 2.7.1.2 | Classes de Interface - boundary | 1d? | 2009-03-07 | 2009-03-08 |  |  | 56.38d |  |  |  |
| 65 | 2.7.1.3 | Classes de controle - control | 1d? | 2009-03-07 | 2009-03-08 |  |  | 56.38d |  |  |  |
| 66 | 2.7.2 | Diagrama de Atividades | 1d? | 2009-03-07 | 2009-03-08 |  |  | 56.38d |  |  |  |
| 67 | 2.7.3 | Diagrama de Seqüência | 1d? | 2009-03-07 | 2009-03-08 |  |  | 56.38d |  |  |  |
| 68 | 2.7.4 | Diagrama de Colaboração, quando necessário | 1d? | 2009-03-07 | 2009-03-08 |  |  | 56.38d |  |  |  |
| 69 | 2.7.5 | Diagrama de Estados | 1d? | 2009-03-07 | 2009-03-08 |  |  | 56.38d |  |  |  |
| 70 | 2.8 | **Implementação Física** | 1d? | 2009-03-07 | 2009-03-08 |  |  | 56.38d |  |  |  |
| 71 | 2.8.1 | Diagrama de Navegação Via Menus | 1d? | 2009-03-07 | 2009-03-08 |  |  | 56.38d |  |  |  |
| 72 | 2.8.2 | **Descrição das Interfaces** | 1d? | 2009-03-07 | 2009-03-08 |  |  | 56.38d |  |  |  |
| 73 | 2.8.2.1 | Atualiza Parâmetro | 1d? | 2009-03-07 | 2009-03-08 |  |  | 56.38d |  |  |  |
| 74 | 2.8.2.2 | Mantém Usuário | 1d? | 2009-03-07 | 2009-03-08 |  |  | 56.38d |  |  |  |
| 75 | 2.8.2.3 | Mantém Convênio | 1d? | 2009-03-07 | 2009-03-08 |  |  | 56.38d |  |  |  |
| 76 | 2.8.2.4 | Mantém Consultas e Exames | 1d? | 2009-03-07 | 2009-03-08 |  |  | 56.38d |  |  |  |
| 77 | 2.8.2.5 | Mantém Agenda Médica | 1d? | 2009-03-07 | 2009-03-08 |  |  | 56.38d |  |  |  |
| 78 | 2.8.2.6 | Atualiza Histórico de Prontuário | 1d? | 2009-03-07 | 2009-03-08 |  |  | 56.38d |  |  |  |
| 79 | 2.8.2.7 | Realiza Login | 1d? | 2009-03-07 | 2009-03-08 |  |  | 56.38d |  |  |  |
| 80 | 2.8.2.8 | Emite Receita | 1d? | 2009-03-07 | 2009-03-08 |  |  | 56.38d |  |  |  |
| 81 | 2.8.2.9 | Emite Relatórios de Convênio | 1d? | 2009-03-07 | 2009-03-08 |  |  | 56.38d |  |  |  |
| 82 | 2.8.2.10 | Emite Relatórios de Usuário | 1d? | 2009-03-07 | 2009-03-08 |  |  | 56.38d |  |  |  |
| 83 | 2.8.2.11 | Emite Relatórios de Prontuário | 1d? | 2009-03-07 | 2009-03-08 |  |  | 56.38d |  |  |  |
| 84 | 2.8.2.12 | Emite Relatórios de Log | 1d? | 2009-03-07 | 2009-03-08 |  |  | 56.38d |  |  |  |
| 85 | 2.8.3 | Dicionário de dados | 1d? | 2009-03-07 | 2009-03-08 |  |  | 56.38d |  |  |  |
| 86 | 2.8.4 | Descrição dos programas | 1d? | 2009-03-07 | 2009-03-08 |  |  | 56.38d |  |  |  |

| ID | WBS | Task | Duration | Start | Finish | Complete | Remaining | Total slack | Constraint | Resources | Work |
| --- | --- | --- | --- | --- | --- | --- | --- | --- | --- | --- | --- |
| 87 | 2.9 | **Arquitetura Computacional** | 1d? | 2009-03-07 | 2009-03-08 |  |  | 56.38d |  |  |  |
| 88 | 2.9.1 | Diagrama de componentes | 1d? | 2009-03-07 | 2009-03-08 |  |  | 56.38d |  |  |  |
| 89 | 2.9.2 | Diagrama de execução | 1d? | 2009-03-07 | 2009-03-08 |  |  | 56.38d |  |  |  |
| 90 | 2.9.3 | Formas de armazenamento e disponibilização dos dados | 1d? | 2009-03-07 | 2009-03-08 |  |  | 56.38d |  |  |  |
| 91 | 2.9.4 | Diagrama da Rede | 1d? | 2009-03-07 | 2009-03-08 |  |  | 56.38d |  |  |  |
| 92 | 2.9.5 | Softwares Básicos e de Apoio Utilizados | 1d? | 2009-03-07 | 2009-03-08 |  |  | 56.38d |  |  |  |
| 93 | 2.9.6 | Detalhamento dos hardwares necessários | 1d? | 2009-03-07 | 2009-03-08 |  |  | 56.38d |  |  |  |
| 94 | 2.10 | **Segurança** | 1d? | 2009-03-07 | 2009-03-08 |  |  | 56.38d |  |  |  |
| 95 | 2.10.1 | Mecanismos de Segurança e Privacidade de Dados | 1d? | 2009-03-07 | 2009-03-08 |  |  | 56.38d |  |  |  |
| 96 | 2.10.2 | Mecanismos de Segurança de Equipamentos e Instalações | 1d? | 2009-03-07 | 2009-03-08 |  |  | 56.38d |  |  |  |
| 97 | 2.11 | **Projetos Futuros** | 1d? | 2009-03-07 | 2009-03-08 |  |  | 56.38d |  |  |  |
| 98 | 2.11.1 | Perspectivas futuras de negócios | 1d? | 2009-03-07 | 2009-03-08 |  |  | 56.38d |  |  |  |
| 99 | 2.11.2 | Perspectivas futuras de tecnologia | 1d? | 2009-03-07 | 2009-03-08 |  |  | 56.38d |  |  |  |
| 100 | 2.12 | Conclusão | 1d? | 2009-03-07 | 2009-03-08 |  |  | 56.38d |  |  |  |
| 101 | 2.13 | Referências Bibliográficas | 1d? | 2009-03-07 A | 2009-03-08 | 50% | 0.5d? | 56.38d |  |  |  |
| 102 | 2.14 | Glossário | 1d? | 2009-03-07 | 2009-03-08 |  |  | 56.38d |  |  |  |
| 103 | 2.15 | Anexos | 1d? | 2009-03-07 | 2009-03-08 |  |  | 56.38d |  |  |  |
| 104 | 2.16 | Apêndices | 1d? | 2009-05-29 | 2009-05-30 |  |  | 0d | finish no earlier than 2009-05-30 |  |  |
| 105 | 3 | **Implementação** | 1d? | 2009-02-28 | 2009-02-28 |  |  | 62.81d |  |  | 8h |
| 106 | 3.1 | Preparação | 1d? | 2009-02-28 | 2009-02-28 |  |  | 62.81d |  | Laurindo Souza | 8h |
| 107 | 3.2 | **Codificação** | 1d? | 2009-02-28 | 2009-02-28 |  |  | 62.81d |  |  |  |
| 108 | 3.2.1 | Atualiza Parâmetro | 1d? | 2009-02-28 | 2009-02-28 |  |  | 62.81d |  |  |  |
| 109 | 3.2.2 | Mantém Usuário | 1d? | 2009-02-28 | 2009-02-28 |  |  | 62.81d |  |  |  |
| 110 | 3.2.3 | Mantém Convênio | 1d? | 2009-02-28 | 2009-02-28 |  |  | 62.81d |  |  |  |
| 111 | 3.2.4 | Mantém Consultas e Exames | 1d? | 2009-02-28 | 2009-02-28 |  |  | 62.81d |  |  |  |
| 112 | 3.2.5 | Mantém Agenda Médica | 1d? | 2009-02-28 | 2009-02-28 |  |  | 62.81d |  |  |  |
| 113 | 3.2.6 | Atualiza Histórico de Prontuário | 1d? | 2009-02-28 | 2009-02-28 |  |  | 62.81d |  |  |  |
| 114 | 3.2.7 | Realiza Login | 1d? | 2009-02-28 | 2009-02-28 |  |  | 62.81d |  |  |  |
| 115 | 3.2.8 | Emite Receita | 1d? | 2009-02-28 | 2009-02-28 |  |  | 62.81d |  |  |  |
| 116 | 3.2.9 | Emite Relatórios de Convênio | 1d? | 2009-02-28 | 2009-02-28 |  |  | 62.81d |  |  |  |
| 117 | 3.2.10 | Emite Relatórios de Usuário | 1d? | 2009-02-28 | 2009-02-28 |  |  | 62.81d |  |  |  |
| 118 | 3.2.11 | Emite Relatórios de Prontuário | 1d? | 2009-02-28 | 2009-02-28 |  |  | 62.81d |  |  |  |
| 119 | 3.2.12 | Emite Relatórios de Log | 1d? | 2009-02-28 | 2009-02-28 |  |  | 62.81d |  |  |  |
